# Bioimpedancia: pruebas clínicas y portabilidad

Schedule from GanttProject, 2020-06-22 to 2020-12-03.
IDEI-UNTDF
Proyecto desarrollado en el marco del curso "Gestión de proyectos en ingeniería" con parte del PIDUNTDF.
Holidays every year on 01-01, 03-24, 04-02, 05-01, 05-25, 07-09, 12-08, 12-25

## Calendars

- Project calendar: Mon-Fri working; Sat-Sun off. Exceptions (off unless hours are given): 2020-07-10 (Independence Day Bridge Holiday), 2020-08-17 (San Martin's Day), 2020-10-12 (Day of respect for cultural diversity), 2020-11-23 (National Sovereignty Day).

## Resources

| Resource |
| --- |
| Antonio DellOsa |
| Guillermo Prisching |
| Diego González Dondo |
| Agustín Mailing |
| Fernando Silva |
| Alejandro Masner |
| Fernando Santiago |

## Schedule

| ID | WBS | Task | Duration | Start | Finish | Predecessors | Resources |
| --- | --- | --- | --- | --- | --- | --- | --- |
| 1 | 1 | **Gestión general del proyecto** | 114d | 2020-06-22 | 2020-12-03 |  |  |
| 2 | 1.1 | Fase de inicio del proyecto | 2d | 2020-06-22 | 2020-06-23 |  | Antonio DellOsa; Guillermo Prisching; Diego González Dondo; Fernando Silva |
| 3 | 1.2 | Definición de alcance | 1d | 2020-06-24 | 2020-06-24 | 2 | Antonio DellOsa; Guillermo Prisching; Diego González Dondo; Fernando Silva; Alejandro Masner; Fernando Santiago |
| 4 | 1.3 | Estudio de la normativa IRAM 4220-1 | 5d | 2020-09-01 | 2020-09-07 |  | Antonio DellOsa [40%]; Diego González Dondo [50%]; Agustín Mailing [30%] |
| 5 | 1.4 | Compras y adquisiciones | 5d | 2020-09-07 | 2020-09-11 |  | Antonio DellOsa [50%] |
| 6 | 1.5 | Elaboración del manual de uso | 4d | 2020-11-30 | 2020-12-03 | 7FF, 8FF, 42 | Antonio DellOsa [40%]; Diego González Dondo [40%]; Agustín Mailing [30%]; Fernando Silva [50%]; Alejandro Masner [50%] |
| 7 | 1.6 | Rendición de compras y adquisiciones | 1d | 2020-12-03 | 2020-12-03 |  | Antonio DellOsa [50%]; Guillermo Prisching [50%] |
| 8 | 1.7 | Escritura del informe final | 3d | 2020-12-01 | 2020-12-03 |  | Antonio DellOsa [50%]; Guillermo Prisching [50%] |
| 9 | 2 | **Sistema de autonomía energética** | 6d | 2020-09-08 | 2020-09-15 |  | Diego González Dondo [0%]; Agustín Mailing [0%] |
| 10 | 2.1 | Análisis y elección de bateria | 1d | 2020-09-08 | 2020-09-08 | 4 | Agustín Mailing |
| 11 | 2.2 | Diseño de circuito de carga | 1d | 2020-09-09 | 2020-09-09 | 10 | Diego González Dondo [50%]; Agustín Mailing [50%] |
| 12 | 2.3 | Implementación del circuito de carga | 2d | 2020-09-14 | 2020-09-15 | 5, 11 | Diego González Dondo [50%]; Agustín Mailing [50%] |
| 13 | 2.4 | Diseño de circuito de regulación | 1d | 2020-09-09 | 2020-09-09 | 10 | Diego González Dondo [50%]; Agustín Mailing [50%] |
| 14 | 2.5 | Implementación del circuito de regulación | 2d | 2020-09-14 | 2020-09-15 | 5, 13 | Diego González Dondo [50%]; Agustín Mailing [50%] |
| 15 | 3 | **Sistema basado en AD5933** | 11d | 2020-09-16 | 2020-09-30 |  | Antonio DellOsa [0%]; Diego González Dondo [0%]; Agustín Mailing [0%] |
| 16 | 3.1 | Diseño del sistema | 5d | 2020-09-16 | 2020-09-22 | 4, 14 | Antonio DellOsa [50%]; Diego González Dondo; Agustín Mailing |
| 17 | 3.2 | Elaboración de la placa del circuito impreso | 4d | 2020-09-23 | 2020-09-28 | 5, 16 | Diego González Dondo [50%]; Agustín Mailing [50%] |
| 18 | 3.3 | Ensamble y soldado de la placa del sistema y electros aplicables | 2d | 2020-09-29 | 2020-09-30 | 17 | Antonio DellOsa; Diego González Dondo; Agustín Mailing |
| 19 | 4 | **Software de control y comunicación basado en Raspberry Pi 4** | 13d | 2020-10-01 | 2020-10-20 | 17 | Antonio DellOsa [0%]; Guillermo Prisching [0%]; Diego González Dondo [0%]; Agustín Mailing [0%] |
| 20 | 4.1 | Diagramación de la arquitectura | 4d | 2020-10-01 | 2020-10-06 | 5, 16, 18 | Antonio DellOsa [50%]; Guillermo Prisching [50%]; Diego González Dondo [50%] |
| 21 | 4.2 | Desarrollo del firmware de comunicación con sistema AD5933 | 3d | 2020-10-07 | 2020-10-09 | 18, 20 | Guillermo Prisching [80%] |
| 22 | 4.3 | Desarrollo de firmware de control | 4d | 2020-10-07 | 2020-10-13 | 18, 20 | Antonio DellOsa; Diego González Dondo |
| 23 | 4.4 | Desarrollo del firmware de comunicación inalámbrica con dispositivo móvil | 4d | 2020-10-13 | 2020-10-16 | 20, 21 | Guillermo Prisching |
| 24 | 4.5 | Pruebas de funcionamiento | 2d | 2020-10-19 | 2020-10-20 | 21, 22, 23 | Antonio DellOsa; Guillermo Prisching [20%]; Diego González Dondo [50%]; Agustín Mailing |

Notes:
- 20: Se demora una semana porque no hay recurso humano disponible para hacerlo simultanealmente con la cual lo condiciona.
- 23: Tarea condicionada a la por falta de recurso humano

| ID | WBS | Task | Duration | Start | Finish | Predecessors | Resources |
| --- | --- | --- | --- | --- | --- | --- | --- |
| 25 | 5 | **Software de interfaz con el usuario** | 20d | 2020-09-25 | 2020-10-23 |  | Antonio DellOsa [0%]; Guillermo Prisching [0%]; Alejandro Masner [0%] |
| 26 | 5.1 | Diagramación de la interfaz (diseño y estructura) | 2d | 2020-09-25 | 2020-09-28 |  | Antonio DellOsa [30%]; Guillermo Prisching [80%]; Fernando Silva [40%]; Alejandro Masner [40%] |
| 27 | 5.2 | Desarrollo del software | 4d | 2020-10-19 | 2020-10-22 | 23, 26 | Guillermo Prisching [60%]; Diego González Dondo [40%] |
| 28 | 5.3 | Pruebas de funcionamiento | 1d | 2020-10-23 | 2020-10-23 | 27 | Antonio DellOsa [30%]; Guillermo Prisching [40%]; Diego González Dondo [50%]; Alejandro Masner [40%] |
| 29 | 6 | **Protocolo de medición y consentimiento informado (CI)** | 17d | 2020-09-07 | 2020-09-29 |  | Antonio DellOsa [0%]; Fernando Silva [0%]; Alejandro Masner [0%] |
| 30 | 6.1 | Escritura del Protocolo de Medición | 1d | 2020-09-07 | 2020-09-07 | 31FF | Antonio DellOsa [10%]; Fernando Silva [50%]; Alejandro Masner [50%] |
| 31 | 6.2 | Escritura del CI | 1d | 2020-09-07 | 2020-09-07 |  | Fernando Silva [50%]; Alejandro Masner [50%] |
| 32 | 6.3 | Primer Envío del protocolo y el CI a comité de bioética externos (CBE) para su revisión | 7d | 2020-09-08 | 2020-09-16 | 30, 31 | Antonio DellOsa [10%]; Alejandro Masner [50%] |
| 33 | 6.4 | Corrección del protocolo y CI a partir de la devolución del CBE | 2d | 2020-09-17 | 2020-09-18 | 32 | Antonio DellOsa [50%]; Fernando Silva; Alejandro Masner |
| 34 | 6.5 | Segundo Envío del protocolo y el CI a CBE para su aprobación definitiva | 7d | 2020-09-21 | 2020-09-29 | 33 | Antonio DellOsa [50%]; Fernando Silva [50%]; Alejandro Masner [50%] |
| 35 | 7 | **Ensayo integral de funcionamiento del dispositivo** | 19d | 2020-10-26 | 2020-11-19 |  | Antonio DellOsa [0%]; Guillermo Prisching [0%]; Diego González Dondo [0%]; Agustín Mailing [0%]; Fernando Silva [0%]; Alejandro Masner [0%] |
| 36 | 7.1 | Implementación integral del dispositivo | 4d | 2020-10-26 | 2020-10-29 | 18, 24, 28 | Guillermo Prisching; Diego González Dondo; Agustín Mailing |
| 37 | 7.2 | Mediciones sobre circuitos de componentes pasivos R-C | 1d | 2020-10-30 | 2020-10-30 | 36 | Antonio DellOsa; Diego González Dondo |
| 38 | 7.3 | Análisis de mediciones en circuito R-C | 1d | 2020-11-02 | 2020-11-02 | 37 | Antonio DellOsa; Diego González Dondo; Agustín Mailing |
| 39 | 7.4 | Mediciones sobre sistemas biológicos ex-vivo | 1d | 2020-11-03 | 2020-11-03 | 38 | Antonio DellOsa; Diego González Dondo |
| 40 | 7.5 | Análisis de mediciones en sistemas biológicos ex-vivo | 1d | 2020-11-04 | 2020-11-04 | 39 | Antonio DellOsa; Diego González Dondo; Agustín Mailing |
| 41 | 7.6 | Mediciones sobre voluntarios humanos | 7d | 2020-11-05 | 2020-11-13 | 34, 40 | Antonio DellOsa; Fernando Silva; Alejandro Masner |
| 42 | 7.7 | Análisis de mediciones sobre seres humanos | 4d | 2020-11-16 | 2020-11-19 | 41 | Antonio DellOsa; Agustín Mailing; Fernando Silva; Alejandro Masner |
